# Cronograma de Actividades SAJU

Schedule from MS Project, 2017-03-09 to 2018-03-29, A marks actual dates.
S.A.T.

## Calendars

- Estándar: Mon-Fri 09:00-13:00, 15:00-19:00; Sat-Sun off. Exceptions (off unless hours are given): 2017-04-13 to 2017-04-14 (FERIADO), 2017-05-01 (DIA DEL TRABAJO), 2017-06-29 (FERIADO), 2017-07-28 (FIESTAS PATRIAS), 2017-08-30 (SANTA ROSA), 2017-11-01 (FERIADO), 2017-12-08 (FERIADO), 2017-12-25 (NAVIDAD).

## Resources

| Resource |
| --- |
| Rosicarmen |
| Diego |
| Marjorie |
| Luis |
| América |
| Usuario |
| Emperatriz |
| Edgard Marquez |
| Ronald Raico |
| Celis |
| AF Calidad |
| Jose Luis |
| Logistica |
| Todos |
| Proveedor |
| Trazabilidad |

## Schedule

| ID | WBS | Task | Type | Duration | Start | Finish | Predecessors | Complete | Remaining | Actual start | Total slack | Constraint | Resources | Work | Actual work |
| --- | --- | --- | --- | --- | --- | --- | --- | --- | --- | --- | --- | --- | --- | --- | --- |
| 1 | 1 | **EJECUCIÓN DEL PROYECTO** |  | 267d? | 2017-03-09 A | 2018-03-29 |  | 52% | 127.89d? |  | 0d |  |  | 2460h | 1941.92h |
| 2 | 1.1 | **INDUCCIÓN** |  | 2d | 2017-03-09 A | 2017-03-10 A |  | 100% |  |  |  |  |  |  |  |
| 3 | 1.1.1 | Presentación de equipos |  | 1d | 2017-03-09 A | 2017-03-09 A |  | 100% |  |  |  |  |  |  |  |
| 4 | 1.1.2 | Capacitación en Procesos |  | 1d | 2017-03-10 A | 2017-03-10 A | 3 | 100% |  |  |  |  |  |  |  |
| 5 | 1.1.3 | Capacitación en la nueva arquitectura |  | 1d | 2017-03-09 A | 2017-03-09 A |  | 100% |  |  |  |  |  |  |  |
| 6 | 1.1.4 | Pasantía con el área usuaria |  | 2d | 2017-03-09 A | 2017-03-10 A |  | 100% |  |  |  |  |  |  |  |
| 7 | 1.2 | **PROCESO DE CONTRATACIÓN (SAJU) 1** |  | 29d | 2017-06-05 | 2017-07-14 A |  | 100% |  | 2017-03-09 |  |  |  |  |  |
| 8 | 1.2.1 | Elaboración de TDR |  | 3d | 2017-06-05 A | 2017-06-07 A |  | 100% |  |  |  |  |  |  |  |
| 9 | 1.2.2 | Aprobación de los TDR |  | 1d | 2017-06-07 A | 2017-06-07 A |  | 100% |  |  |  |  |  |  |  |
| 10 | 1.2.3 | Elaboración y Firma de Bases |  | 1d | 2017-07-03 A | 2017-07-03 A |  | 100% |  |  |  |  |  |  |  |
| 11 | 1.2.4 | Publicación de convocatoria |  | 1d | 2017-03-09 A | 2017-03-09 A |  | 100% |  |  |  |  |  |  |  |
| 12 | 1.2.5 | Registro de participantes |  | 9d | 2017-07-03 A | 2017-07-13 A |  | 100% |  |  |  |  |  |  |  |
| 13 | 1.2.6 | Consultas y observaciones |  | 2d | 2017-07-04 A | 2017-07-05 A |  | 100% |  |  |  |  |  |  |  |
| 14 | 1.2.7 | Absolución de consultas y observaciones |  | 1d | 2017-07-06 A | 2017-07-06 A |  | 100% |  |  |  |  |  |  |  |
| 15 | 1.2.8 | Integración de Bases |  | 1d | 2017-07-07 A | 2017-07-07 A |  | 100% |  |  |  |  |  |  |  |
| 16 | 1.2.9 | Presentación de ofertas | milestone | 0d | 2017-07-13 A | 2017-07-13 A |  | 100% |  |  |  |  |  |  |  |
| 17 | 1.2.10 | Evaluación y calificación |  | 1d | 2017-07-13 A | 2017-07-13 A |  | 100% |  |  |  |  |  |  |  |
| 18 | 1.2.11 | Otorgamiento de la nueva Pro |  | 1d | 2017-07-14 A | 2017-07-14 A |  | 100% |  |  |  |  |  |  |  |
| 19 | 1.3 | **PROCESO DE CONTRATACIÓN (SAJU) -2da** |  | 22d | 2017-07-24 A | 2017-08-23 |  | 73% | 5.92d |  | 152d |  |  | 208h | 152h |
| 20 | 1.3.1 | Elaboración y Firma de Bases |  | 2d | 2017-07-24 A | 2017-07-25 A |  | 100% |  |  |  |  | Logistica | 16h | 16h |
| 21 | 1.3.2 | Publicación de convocatoria |  | 1d | 2017-07-26 A | 2017-07-26 A |  | 100% |  |  |  |  | Logistica | 8h | 8h |
| 22 | 1.3.3 | Registro de participantes |  | 9d | 2017-07-31 A | 2017-08-11 A |  | 100% |  |  |  | finish no earlier than 2017-08-11 | Logistica | 72h | 72h |
| 23 | 1.3.4 | Consultas y observaciones |  | 2d | 2017-07-31 A | 2017-08-01 A |  | 100% |  |  |  | start no earlier than 2017-07-31 | Logistica | 16h | 16h |
| 24 | 1.3.5 | Absolución de consultas y observaciones |  | 1d | 2017-08-02 A | 2017-08-02 A | 23 | 100% |  |  |  |  | Logistica | 8h | 8h |
| 25 | 1.3.6 | Integración de Bases |  | 1d | 2017-08-08 A | 2017-08-08 A |  | 100% |  |  |  | start no earlier than 2017-08-08 | Logistica | 8h | 8h |
| 26 | 1.3.7 | Presentación de ofertas |  | 1d | 2017-08-11 A | 2017-08-11 A |  | 100% |  |  |  | start no earlier than 2017-08-11 | Logistica | 8h | 8h |
| 27 | 1.3.8 | Evaluación y calificación |  | 1d | 2017-08-14 A | 2017-08-14 A | 26 | 100% |  |  |  |  | Logistica | 8h | 8h |
| 28 | 1.3.9 | Otorgamiento de la nueva Pro |  | 1d | 2017-08-14 A | 2017-08-14 A | 26 | 100% |  |  |  |  | Logistica | 8h | 8h |
| 29 | 1.3.10 | Firma de Contrato |  | 7d | 2017-08-15 | 2017-08-23 | 28 |  |  |  | 152d |  | Logistica | 56h |  |

| ID | WBS | Task | Duration | Start | Finish | Predecessors | Complete | Remaining | Total slack | Resources | Work | Actual work |
| --- | --- | --- | --- | --- | --- | --- | --- | --- | --- | --- | --- | --- |
| 30 | 1.4 | **PLANIFICACIÓN** | 56d | 2017-03-09 A | 2017-05-30 A |  | 100% |  |  |  | 919.2h | 919.2h |
| 31 | 1.4.1 | **Relevamiento de Información** | 56d | 2017-03-09 A | 2017-05-30 A |  | 100% |  |  |  | 848.4h | 848.4h |
| 32 | 1.4.1.1 | Reuniones con los involucrados y elaboración de AS IS | 23d | 2017-03-09 A | 2017-04-10 A |  | 100% |  |  | América [50%]; Luis [45%]; Marjorie [80%]; Rosicarmen; Usuario [70%] | 634.8h | 634.8h |
| 33 | 1.4.1.2 | Revisión (Usuario - GOP - GPY - GIN) | 2d | 2017-04-11 A | 2017-04-12 A |  | 100% |  |  | América [50%]; Luis [45%]; Marjorie [80%]; Rosicarmen; Usuario [70%] | 55.2h | 55.2h |
| 34 | 1.4.1.3 | Levantamiento de observaciones | 8d | 2017-04-17 A | 2017-04-26 A | 33 | 100% |  |  | Rosicarmen | 64h | 64h |
| 35 | 1.4.1.4 | Validación Final del AS IS | 13d | 2017-04-27 A | 2017-05-16 A | 34 | 100% |  |  | Marjorie [80%] | 83.2h | 83.2h |
| 36 | 1.4.1.5 | Aprobación del Relevamiento de Información | 2d | 2017-05-29 A | 2017-05-30 A | 35 | 100% |  |  | Usuario [70%]; Marjorie [80%]; Rosicarmen | 11.2h | 11.2h |
| 37 | 1.4.2 | **Declaración del Alcance** | 7d | 2017-05-22 A | 2017-05-30 A |  | 100% |  |  |  | 70.8h | 70.8h |
| 38 | 1.4.2.1 | Elaboración del documento | 3d | 2017-05-22 A | 2017-05-24 A | 36 | 100% |  |  | América [50%] | 12h | 12h |
| 39 | 1.4.2.2 | Revisión del documento | 1d | 2017-05-25 A | 2017-05-25 A | 38 | 100% |  |  | Luis [45%]; Marjorie [80%]; Usuario [70%] | 15.6h | 15.6h |
| 40 | 1.4.2.3 | Levantamiento de observaciones | 1d | 2017-05-26 A | 2017-05-26 A | 39 | 100% |  |  | América [50%] | 4h | 4h |
| 41 | 1.4.2.4 | Validación Final | 2d | 2017-05-29 A | 2017-05-30 A | 40 | 100% |  |  | Luis [45%]; Marjorie [80%]; Usuario [70%] | 31.2h | 31.2h |
| 42 | 1.4.2.5 | Aprobación del documento | 1d | 2017-05-30 A | 2017-05-30 A | 41 | 100% |  |  | Todos | 8h | 8h |
| 43 | 1.5 | **MODELADO DE PROCESOS** | 89d | 2017-04-03 A | 2017-08-10 |  | 83% | 14.72d | 161d |  | 450.4h | 375.52h |
| 44 | 1.5.1 | **Ficha Técnica del Proceso** | 39d | 2017-04-03 A | 2017-05-30 A |  | 100% |  |  |  | 341.6h | 341.6h |
| 45 | 1.5.1.1 | Elaboración del TO BE | 10d | 2017-04-03 A | 2017-04-18 A | 36 | 100% |  |  | Rosicarmen | 80h | 80h |
| 46 | 1.5.1.2 | Revisión (Usuario - GOP - GPY - GIN) | 2d | 2017-04-19 A | 2017-04-20 A | 45 | 100% |  |  | América [50%]; Luis [45%]; Marjorie [80%]; Rosicarmen; Usuario [70%] | 55.2h | 55.2h |
| 47 | 1.5.1.3 | Levantamiento de observaciones | 4d | 2017-04-21 A | 2017-04-26 A | 46 | 100% |  |  | Rosicarmen | 32h | 32h |
| 48 | 1.5.1.4 | Validación Final del TO BE | 1d | 2017-04-27 A | 2017-04-27 A | 47 | 100% |  |  | Marjorie [80%] | 6.4h | 6.4h |
| 49 | 1.5.1.5 | Ficha Técnica del Proceso | 13d | 2017-04-28 A | 2017-05-17 A | 48 | 100% |  |  | Rosicarmen | 104h | 104h |
| 50 | 1.5.1.6 | Revisión de GOP | 3d | 2017-05-18 A | 2017-05-22 A | 49 | 100% |  |  | Marjorie [80%] | 19.2h | 19.2h |
| 51 | 1.5.1.7 | Levantamiento de observaciones | 2d | 2017-05-23 A | 2017-05-24 A | 50 | 100% |  |  | Rosicarmen | 16h | 16h |
| 52 | 1.5.1.8 | Validación Final de la Ficha Técnica de Proceso | 2d | 2017-05-25 A | 2017-05-26 A | 51 | 100% |  |  | Marjorie [80%] | 12.8h | 12.8h |
| 53 | 1.5.1.9 | Aprobación del documento | 2d | 2017-05-29 A | 2017-05-30 A | 52 | 100% |  |  | Todos | 16h | 16h |

| ID | WBS | Task | Duration | Start | Finish | Predecessors | Complete | Remaining | Total slack | Free slack | Constraint | Resources | Work | Actual work |
| --- | --- | --- | --- | --- | --- | --- | --- | --- | --- | --- | --- | --- | --- | --- |
| 54 | 1.5.2 | **Procedimiento** | 13d | 2017-07-24 A | 2017-08-10 |  | 34% | 8.6d | 161d |  |  |  | 108.8h | 33.92h |
| 55 | 1.5.2.1 | Elaboración del procedimiento | 8d | 2017-07-24 A | 2017-08-03 | 53 | 40% | 4.8d | 0.8d | 0d |  | Emperatriz | 64h | 25.6h |
| 56 | 1.5.2.2 | Revisión del procedimiento (Usuario y GOP) | 2d | 2017-08-04 A | 2017-08-07 | 55 | 40% | 1.2d | 0.4d | 0d |  | Marjorie [80%] | 12.8h | 5.12h |
| 57 | 1.5.2.3 | Levantamiento de observaciones | 1d | 2017-08-08 A | 2017-08-08 | 56 | 40% | 0.6d | 161d | 0d |  | Emperatriz | 8h | 3.2h |
| 58 | 1.5.2.4 | Validación (GOP, Usuario) | 1d | 2017-08-09 | 2017-08-09 | 57 |  |  | 161d | 0d |  | Marjorie [80%]; Usuario [70%] | 12h |  |
| 59 | 1.5.2.5 | Aprobación del documento | 1d | 2017-08-10 | 2017-08-10 | 58 |  |  | 161d |  |  | Marjorie [80%]; Usuario [70%] | 12h |  |
| 60 | 1.6 | **ANALISIS Y DISEÑO DEL SISTEMA** | 68d | 2017-05-22 A | 2017-08-25 |  | 72% | 19.29d | 150d |  |  |  | 780h | 495.2h |
| 61 | 1.6.1 | **Definición Funcional SAJU** | 17d | 2017-05-22 A | 2017-06-13 A |  | 100% |  |  |  |  |  | 295.2h | 295.2h |
| 62 | 1.6.1.1 | Elaboración de la Definición Funcional | 12d | 2017-05-22 A | 2017-06-06 A |  | 100% |  |  |  |  | Diego; Rosicarmen | 192h | 192h |
| 63 | 1.6.1.2 | Revisión de GIN GOP y Usuario | 1d | 2017-06-07 A | 2017-06-07 A | 62 | 100% |  |  |  |  | América [50%]; Diego; Luis [45%]; Marjorie [80%]; Rosicarmen; Usuario [70%] | 35.6h | 35.6h |
| 64 | 1.6.1.3 | Levantamiento de Observaciones de la DF | 3d | 2017-06-08 A | 2017-06-12 A | 63 | 100% |  |  |  |  | Diego; Rosicarmen | 48h | 48h |
| 65 | 1.6.1.4 | Validación Final DF (Usuario, GOP y GIN) | 1d | 2017-06-13 A | 2017-06-13 A | 64 | 100% |  |  |  | finish no earlier than 2017-06-13 | América [50%]; Luis [45%]; Marjorie [80%]; Usuario [70%] | 19.6h | 19.6h |
| 66 | 1.6.2 | **Definición Funcional SGD** | 5.88d | 2017-06-14 A | 2017-06-21 A |  | 100% |  |  |  |  |  | 43.6h | 43.6h |
| 67 | 1.6.2.1 | Elaboración de la Definición Funcional | 1d | 2017-06-14 A | 2017-06-14 A |  | 100% |  |  |  |  | Diego | 8h | 8h |
| 68 | 1.6.2.2 | Revisión de GOP (reglas de negocio) | 1d | 2017-06-15 A | 2017-06-15 A | 67 | 100% |  |  |  |  | Marjorie [80%] | 6.4h | 6.4h |
| 69 | 1.6.2.3 | Revisión de GIN y Usuario | 1d | 2017-06-16 A | 2017-06-16 A | 68 | 100% |  |  |  |  | América [50%]; Luis [45%]; Usuario [70%] | 13.2h | 13.2h |
| 70 | 1.6.2.4 | Levantamiento de Observaciones de la DF | 1d | 2017-06-19 A | 2017-06-19 A | 69 | 100% |  |  |  |  | Diego | 8h | 8h |
| 71 | 1.6.2.5 | Validación Final DF (Usuario, GOP y GIN) | 1d | 2017-06-20 A | 2017-06-21 A | 70 | 100% |  |  |  | finish no earlier than 2017-06-21 | Todos | 8h | 8h |
| 72 | 1.6.3 | **Documento Técnico SGD** | 14d | 2017-07-17 A | 2017-08-04 |  | 32% | 9.45d | 165d |  |  |  | 186.8h | 36.4h |
| 73 | 1.6.3.1 | Elaboración del DT | 7d | 2017-07-17 A | 2017-07-25 |  | 65% | 2.45d | 165d | 0d | start no earlier than 2017-07-17 | Diego | 56h | 36.4h |
| 74 | 1.6.3.2 | Revisión de GIN (Arquitectura /Modelo de Datos) | 2d | 2017-07-26 | 2017-07-27 | 73 |  |  | 165d | 0d |  | Celis; Edgard Marquez; Ronald Raico | 48h |  |
| 75 | 1.6.3.3 | Levantamiento de Observaciones | 2d | 2017-07-31 | 2017-08-01 | 74 |  |  | 165d | 0d |  | Diego | 16h |  |
| 76 | 1.6.3.4 | Revisión 2 de GIN (Arquitectura /Modelo de Datos) | 2d | 2017-08-02 | 2017-08-03 | 75 |  |  | 165d | 0d |  | Celis; Edgard Marquez; Luis [45%] | 39.2h |  |
| 77 | 1.6.3.5 | Validación Final | 1d | 2017-08-04 | 2017-08-04 | 76 |  |  | 165d |  |  | Celis; Edgard Marquez; Luis [45%]; Ronald Raico | 27.6h |  |

| ID | WBS | Task | Duration | Start | Finish | Predecessors | Complete | Remaining | Total slack | Free slack | Constraint | Resources | Work | Actual work |
| --- | --- | --- | --- | --- | --- | --- | --- | --- | --- | --- | --- | --- | --- | --- |
| 78 | 1.6.4 | **Documento Técnico SAJU** | 22d | 2017-07-26 A | 2017-08-25 |  | 68% | 7d | 150d |  |  |  | 254.4h | 120h |
| 79 | 1.6.4.1 | Elaboración de la DT | 15d | 2017-07-26 A | 2017-08-16 A |  | 100% |  |  |  | start no earlier than 2017-07-26 | Proveedor | 120h | 120h |
| 80 | 1.6.4.2 | Revisión de GIN (Arquitectura /Modelo de Datos) | 3d | 2017-08-17 | 2017-08-21 | 79 |  |  | 150d | 0d |  | Celis; Edgard Marquez; Luis [45%]; Ronald Raico | 82.8h |  |
| 81 | 1.6.4.3 | Levantamiento de Observaciones | 2d | 2017-08-22 | 2017-08-23 | 80 |  |  | 150d | 0d |  | Proveedor | 16h |  |
| 82 | 1.6.4.4 | Revisión 2 de GIN (Arquitectura /Modelo de Datos) | 1d | 2017-08-24 | 2017-08-24 | 81 |  |  | 150d | 0d |  | Celis; Edgard Marquez; Luis [45%]; Ronald Raico | 27.6h |  |
| 83 | 1.6.4.5 | Validación Final | 1d | 2017-08-25 | 2017-08-25 | 82 |  |  | 150d |  |  | Todos | 8h |  |
| 84 | 1.7 | **CONSTRUCCIÓN** | 263d? | 2017-03-09 A | 2018-03-23 |  | 11% | 233.21d? | 4d |  |  |  | 102.4h |  |
| 85 | 1.7.1 | **Desarrollo en el SGD** | 40d | 2017-07-17 A | 2017-09-12 |  | 22% | 31.36d | 139d |  |  |  | 55.2h |  |
| 86 | 1.7.1.1 | **Iteración 1** | 23d | 2017-07-17 A | 2017-08-17 |  | 65% | 8.1d | 156d |  |  |  | 55.2h |  |
| 87 | 1.7.1.1.1 | RQ 001: Consulta de Trámites | 3d | 2017-07-17 A | 2017-07-19 A |  | 100% |  |  |  | start no earlier than 2017-07-17 |  |  |  |
| 88 | 1.7.1.1.2 | RQ 002: Registrar Trámites en forma Masiva | 3d | 2017-07-17 A | 2017-07-19 |  | 90% | 0.3d | 176d |  | start no earlier than 2017-07-17 |  |  |  |
| 89 | 1.7.1.1.3 | RQ 002: Registrar Trámites en forma Masiva | 2d | 2017-07-20 A | 2017-07-21 |  | 70% | 0.6d | 174d |  | start no earlier than 2017-07-20 |  |  |  |
| 90 | 1.7.1.1.4 | RQ 002: Registrar Tramites en forma Masiva | 3d | 2017-07-24 A | 2017-07-26 |  | 70% | 0.9d | 171d |  |  |  |  |  |
| 91 | 1.7.1.1.5 | RQ 001: Gestionar Registro de Expedientes Judiciales (SAJU) | 10d | 2017-07-31 A | 2017-08-12 |  | 70% | 3d | 149d | 0d | finish no earlier than 2017-08-12 |  |  |  |
| 92 | 1.7.1.1.6 | Revisión integral y modificaciones | 2d | 2017-08-14 | 2017-08-15 | 91 |  |  | 149d | 0d |  | Diego; Luis [45%] | 23.2h |  |
| 93 | 1.7.1.1.7 | Revisión en Desarrollo | 2d | 2017-08-16 | 2017-08-17 | 92 |  |  | 149d | 0d |  | Edgard Marquez; Ronald Raico | 32h |  |
| 94 | 1.7.1.2 | **Iteración 2** | 12d | 2017-08-09 | 2017-08-24 |  |  |  | 131d |  |  |  |  |  |
| 95 | 1.7.1.2.1 | RQ 003: Gestionar Registro de Notificaciones - cédulas (importar) | 10d | 2017-08-09 | 2017-08-22 |  |  |  | 131d | 0d | start no earlier than 2017-08-09 |  |  |  |
| 96 | 1.7.1.2.2 | Revisión en Desarrollo | 2d | 2017-08-23 | 2017-08-24 | 95 |  |  | 145d | 0d |  |  |  |  |
| 97 | 1.7.1.3 | **Iteración 3** | 14d | 2017-08-23 | 2017-09-12 |  |  |  | 131d |  |  |  |  |  |
| 98 | 1.7.1.3.1 | RQ 004: Gestionar Registro de Notificaciones - cédulas (asignar) | 12d | 2017-08-23 | 2017-09-08 | 95 |  |  | 141d |  |  |  |  |  |
| 99 | 1.7.1.3.2 | RQ 004: Gestionar Atencion de Notificaciones - cédulas (recepcionar, atender) | 12d | 2017-08-23 | 2017-09-08 | 95 |  |  | 141d |  |  |  |  |  |
| 100 | 1.7.1.3.3 | RQ 004: Gestionar Escritos (generar, rechazar, aprobar) | 12d | 2017-08-23 | 2017-09-08 | 95 |  |  | 131d | 0d | finish no earlier than 2017-09-08 |  |  |  |
| 101 | 1.7.1.3.4 | Revisión en Desarrollo | 2d | 2017-09-11 | 2017-09-12 | 100 |  |  | 131d | 0d |  |  |  |  |

Notes:
- 87: Consulta
- 88: Registro masivo de trámites
- 89: Registro masivo de trámites
- 91: Registrar

| ID | WBS | Task | Duration | Start | Finish | Total slack | Free slack |
| --- | --- | --- | --- | --- | --- | --- | --- |
| 102 | 1.7.2 | **Desarrollo en SAJU** | 2d? | 2017-03-09 | 2017-03-10 | 263d |  |
| 103 | 1.7.2.1 | **Iteración 1** | 2d? | 2017-03-09 | 2017-03-10 | 264d |  |
| 104 | 1.7.2.1.1 | RQ 001: | 1d? | 2017-03-09 | 2017-03-09 | 266d |  |
| 105 | 1.7.2.1.2 | RQ 002: | 1d? | 2017-03-09 | 2017-03-09 | 266d |  |
| 106 | 1.7.2.1.3 | RQ 003: | 1d? | 2017-03-09 | 2017-03-09 | 266d |  |
| 107 | 1.7.2.1.4 | RQ 004: | 1d? | 2017-03-09 | 2017-03-09 | 266d |  |
| 108 | 1.7.2.1.5 | RQ 005: | 1d? | 2017-03-09 | 2017-03-09 | 266d |  |
| 109 | 1.7.2.1.6 | RQ 006: | 1d? | 2017-03-09 | 2017-03-09 | 266d |  |
| 110 | 1.7.2.1.7 | RQ 007: | 1d? | 2017-03-09 | 2017-03-09 | 266d |  |
| 111 | 1.7.2.1.8 | RQ 008: | 1d? | 2017-03-09 | 2017-03-09 | 266d |  |
| 112 | 1.7.2.1.9 | RQ 009: | 1d? | 2017-03-09 | 2017-03-09 | 266d |  |
| 113 | 1.7.2.1.10 | RQ 010: | 1d? | 2017-03-09 | 2017-03-09 | 266d |  |
| 114 | 1.7.2.1.11 | Revisión en Desarrollo | 2d | 2017-03-09 | 2017-03-10 | 264d | 0d |
| 115 | 1.7.2.2 | **Iteración 2** | 2d? | 2017-03-09 | 2017-03-10 | 263d |  |
| 116 | 1.7.2.2.1 | RQ 001: | 1d? | 2017-03-09 | 2017-03-09 | 266d |  |
| 117 | 1.7.2.2.2 | RQ 002: | 1d? | 2017-03-09 | 2017-03-09 | 266d |  |
| 118 | 1.7.2.2.3 | RQ 003: | 1d? | 2017-03-09 | 2017-03-09 | 266d |  |
| 119 | 1.7.2.2.4 | RQ 004: | 1d? | 2017-03-09 | 2017-03-09 | 266d |  |
| 120 | 1.7.2.2.5 | RQ 005: | 1d? | 2017-03-09 | 2017-03-09 | 266d |  |
| 121 | 1.7.2.2.6 | RQ 006: | 1d? | 2017-03-09 | 2017-03-09 | 266d |  |
| 122 | 1.7.2.2.7 | RQ 007: | 1d? | 2017-03-09 | 2017-03-09 | 266d |  |
| 123 | 1.7.2.2.8 | RQ 008: | 1d? | 2017-03-09 | 2017-03-09 | 266d |  |
| 124 | 1.7.2.2.9 | RQ 009: | 1d? | 2017-03-09 | 2017-03-09 | 266d |  |
| 125 | 1.7.2.2.10 | RQ 010: | 1d? | 2017-03-09 | 2017-03-09 | 266d |  |
| 126 | 1.7.2.2.11 | Revisión en Desarrollo | 2d | 2017-03-09 | 2017-03-10 | 263d | 0d |

| ID | WBS | Task | Duration | Start | Finish | Predecessors | Total slack | Free slack |
| --- | --- | --- | --- | --- | --- | --- | --- | --- |
| 127 | 1.7.3 | **Pruebas en SGD** | 24d | 2017-08-18 | 2017-09-21 |  | 132d |  |
| 128 | 1.7.3.1 | **Iteración 1** | 6d | 2017-08-18 | 2017-08-25 |  | 149d |  |
| 129 | 1.7.3.1.1 | Documentación para el pase | 1d | 2017-08-18 | 2017-08-18 | 93 | 149d | 0d |
| 130 | 1.7.3.1.2 | Envío y Revisión por AF Calidad (Rev 1) | 3d | 2017-08-21 | 2017-08-23 | 129 | 149d | 0d |
| 131 | 1.7.3.1.3 | Pruebas con el equipo AE | 1d | 2017-08-24 | 2017-08-24 | 130 | 151d |  |
| 132 | 1.7.3.1.4 | Pruebas de Aceptación (usuario) | 2d | 2017-08-24 | 2017-08-25 | 130 | 149d | 0d |
| 133 | 1.7.3.2 | **Iteración 2** | 7d | 2017-08-23 | 2017-09-01 |  | 146d |  |
| 134 | 1.7.3.2.1 | Documentación para el pase | 1d | 2017-08-23 | 2017-08-23 | 95 | 152d |  |
| 135 | 1.7.3.2.2 | Envío y Revisión por AF Calidad (Rev 1) | 2d | 2017-08-25 | 2017-08-28 | 96 | 145d | 0d |
| 136 | 1.7.3.2.3 | Levantamiento de Observaciones | 1d | 2017-08-29 | 2017-08-29 | 135 | 145d | 0d |
| 137 | 1.7.3.2.4 | Envío y Revisión por AF Calidad (Rev 2) | 1d | 2017-08-31 | 2017-08-31 | 136 | 145d | 0d |
| 138 | 1.7.3.2.5 | Pruebas con el equipo AE | 1d | 2017-09-01 | 2017-09-01 | 137 | 146d |  |
| 139 | 1.7.3.2.6 | Pruebas de Aceptación (usuario) | 1d | 2017-09-01 | 2017-09-01 | 137 | 145d | 0d |
| 140 | 1.7.3.3 | **Iteración 3** | 9d | 2017-09-11 | 2017-09-21 |  | 132d |  |
| 141 | 1.7.3.3.1 | Documentación para el pase | 1d | 2017-09-11 | 2017-09-11 | 100 | 140d |  |
| 142 | 1.7.3.3.2 | Envío y Revisión por AF Calidad (Rev 1) | 2d | 2017-09-13 | 2017-09-14 | 101 | 131d | 0d |
| 143 | 1.7.3.3.3 | Levantamiento de Observaciones | 1d | 2017-09-15 | 2017-09-15 | 142 | 131d | 0d |
| 144 | 1.7.3.3.4 | Envío y Revisión por AF Calidad (Rev 2) | 2d | 2017-09-18 | 2017-09-19 | 143 | 131d | 0d |
| 145 | 1.7.3.3.5 | Pruebas con el equipo AE | 1d | 2017-09-20 | 2017-09-20 | 144 | 131d | 0d |
| 146 | 1.7.3.3.6 | Pruebas de Aceptación (usuario) | 1d | 2017-09-21 | 2017-09-21 | 145 | 131d | 0d |
| 147 | 1.7.4 | **Pruebas en SAJU** | 3d | 2017-03-09 | 2017-03-13 |  | 264d |  |
| 148 | 1.7.4.1 | **Iteración 1** | 3d | 2017-03-09 | 2017-03-13 |  | 264d |  |
| 149 | 1.7.4.1.1 | Documentación para el pase | 1d | 2017-03-13 | 2017-03-13 | 114 | 264d |  |
| 150 | 1.7.4.1.2 | Envío y Revisión por AF Calidad (Rev 1) | 2d | 2017-03-09 | 2017-03-10 |  | 265d |  |
| 151 | 1.7.4.1.3 | Levantamiento de Observaciones | 1d | 2017-03-09 | 2017-03-09 |  | 266d |  |
| 152 | 1.7.4.1.4 | Envío y Revisión por AF Calidad (Rev 2) | 2d | 2017-03-09 | 2017-03-10 |  | 265d |  |
| 153 | 1.7.4.1.5 | Pruebas con el equipo AE | 1d | 2017-03-09 | 2017-03-09 |  | 266d |  |
| 154 | 1.7.4.1.6 | Pruebas de Aceptación (usuario) | 1d | 2017-03-09 | 2017-03-09 |  | 266d |  |

| ID | WBS | Task | Type | Duration | Start | Finish | Predecessors | Total slack | Free slack | Constraint | Resources | Work |
| --- | --- | --- | --- | --- | --- | --- | --- | --- | --- | --- | --- | --- |
| 155 | 1.7.4.2 | **Iteración 2** |  | 3d | 2017-03-09 | 2017-03-13 |  | 263d | 183d |  |  |  |
| 156 | 1.7.4.2.1 | Documentación para el pase |  | 1d | 2017-03-13 | 2017-03-13 | 126 | 263d |  |  |  |  |
| 157 | 1.7.4.2.2 | Envío y Revisión por AF Calidad (Rev 1) |  | 2d | 2017-03-09 | 2017-03-10 |  | 264d |  |  |  |  |
| 158 | 1.7.4.2.3 | Levantamiento de Observaciones |  | 1d | 2017-03-09 | 2017-03-09 |  | 265d |  |  |  |  |
| 159 | 1.7.4.2.4 | Envío y Revisión por AF Calidad (Rev 2) |  | 2d | 2017-03-09 | 2017-03-10 |  | 264d |  |  |  |  |
| 160 | 1.7.4.2.5 | Pruebas con el equipo AE |  | 1d | 2017-03-09 | 2017-03-09 |  | 265d |  |  |  |  |
| 161 | 1.7.4.2.6 | Pruebas de Aceptación (usuario) |  | 1d | 2017-03-09 | 2017-03-09 |  | 265d | 261d |  |  |  |
| 162 | 1.7.5 | **Producción SGD** |  | 24d | 2017-08-28 | 2017-09-29 |  | 126d |  |  |  | 8h |
| 163 | 1.7.5.1 | Iteración 1 |  | 1d | 2017-08-28 | 2017-08-28 | 132 | 149d |  |  |  |  |
| 164 | 1.7.5.2 | Iteración 2 |  | 1d | 2017-09-04 | 2017-09-04 | 139 | 145d |  |  |  |  |
| 165 | 1.7.5.3 | Iteración 3 |  | 1d | 2017-09-22 | 2017-09-22 | 146 | 131d |  |  |  |  |
| 166 | 1.7.5.4 | Iteración 4 |  | 1d | 2017-09-29 | 2017-09-29 |  | 126d |  | start no earlier than 2017-09-29 | Trazabilidad | 8h |
| 167 | 1.7.6 | **Producción SAJU** |  | 77d | 2017-12-05 | 2018-03-23 |  | 4d |  |  |  | 39.2h |
| 168 | 1.7.6.1 | Iteración 1 |  | 1d | 2017-12-05 | 2017-12-05 | 155 | 80d |  | start no earlier than 2017-12-05 | Diego; Luis [45%]; Proveedor | 19.6h |
| 169 | 1.7.6.2 | Iteración 2 |  | 1d | 2018-03-23 | 2018-03-23 | 161 | 4d |  | start no earlier than 2018-03-23 | Diego; Luis [45%]; Proveedor | 19.6h |
| 170 | 1.8 | **Documentación y Actividades complementarias** |  | 21d | 2018-03-01 | 2018-03-29 |  | 0d |  |  |  |  |
| 171 | 1.8.1 | **Manual de Usuario** |  | 21d | 2018-03-01 | 2018-03-29 |  |  |  |  |  |  |
| 172 | 1.8.1.1 | Elaboración del Manual de Usuario |  | 12d | 2018-03-01 | 2018-03-16 |  | 0d |  |  |  |  |
| 173 | 1.8.1.2 | Revisión del usuario |  | 4d | 2018-03-19 | 2018-03-22 | 172 | 0d |  |  |  |  |
| 174 | 1.8.1.3 | Levantamiento de observaciones |  | 2d | 2018-03-23 | 2018-03-26 | 173 | 0d |  |  |  |  |
| 175 | 1.8.1.4 | Revisión final |  | 1d | 2018-03-27 | 2018-03-27 | 174 | 0d |  |  |  |  |
| 176 | 1.8.1.5 | Aprobación del Manual |  | 2d | 2018-03-28 | 2018-03-29 | 175 | 0d |  |  |  |  |
| 177 | 1.8.2 | Capacitación a Usuarios |  | 2d | 2018-03-27 | 2018-03-28 |  | 1d |  | start no earlier than 2018-03-27 |  |  |
| 178 | 1.9 | RQ 004: Derivar trámites en forma automática (Registrar Derivación, derivar, recepcionar ) | manual | 1d | 2017-03-09 | 2017-03-09 |  |  |  |  |  |  |

Notes:
- 166: Será realizado por el equipo de trazabilidad

| ID | WBS | Task | Type | Duration | Start | Finish | Total slack |
| --- | --- | --- | --- | --- | --- | --- | --- |
| 179 | 1.10 | **2.5.1 Dimensionamiento** |  | 1d | 2017-03-09 | 2017-03-09 | 0d |
| 180 | 1.10.1 | Levantamiento y análisis | manual | 1d | 2017-03-09 | 2017-03-09 |  |
| 181 | 1.10.2 | Validación de la GOP | manual | 1d | 2017-03-09 | 2017-03-09 |  |
| 182 | 1.10.3 | Revisión y Aprobación con el Usuario | manual | 1d | 2017-03-09 | 2017-03-09 |  |
